# CSM 4.0

Schedule from MS Project, 2007-01-16 to 2007-08-16, A marks actual dates.
NCI

## Calendars

- Standard: Mon-Fri 08:00-12:00, 13:00-17:00; Sat-Sun off. Exceptions (off unless hours are given): 2007-02-05 to 2007-02-07.

## Resources

| Resource |
| --- |
| Kunal |
| Vijay |
| Charles |
| Avinash |
| Steve |
| KunalKunalK |
| QA |
| Kuanl |
| caGRID |
| Satish |
| Kunal/Satish |

## Schedule

| ID | WBS | Task | Type | Duration | Start | Finish | Predecessors | Complete | Remaining | Total slack | Constraint | Resources | Work | Actual work |
| --- | --- | --- | --- | --- | --- | --- | --- | --- | --- | --- | --- | --- | --- | --- |
| 1 | 1 | **CSM v4.0** |  | 150d? | 2007-01-16 A | 2007-08-16 |  | 38% | 93.67d? | 0d |  |  | 2082.8h | 981.93h |
| 2 | 1.1 | **Inception** |  | 3d | 2007-01-19 A | 2007-01-23 A |  | 100% |  |  |  |  | 8h | 8h |
| 3 | 1.1.1 | 4.0 Kickoff meeting | milestone | 0d | 2007-01-19 A | 2007-01-19 A |  | 100% |  |  | start no earlier than 2007-01-19 | Kunal; Charles; Steve |  |  |
| 4 | 1.1.2 | Create initial task plan |  | 1d | 2007-01-23 A | 2007-01-23 A |  | 100% |  |  |  | Kunal | 8h | 8h |
| 5 | 1.2 | **Support** |  | 27d? | 2007-01-23 A | 2007-03-05 |  | 25% | 20.25d? | 112d |  | Kunal [20%] | 168h | 116.49h |
| 6 | 1.2.1 | Application Support |  | 27d? | 2007-01-23 | 2007-03-05 |  |  |  | 100d | start no earlier than 2007-01-23 | Kunal [10%] | 21.6h |  |
| 7 | 1.2.2 | Support for caBIG Activities |  | 9d? | 2007-01-23 A | 2007-02-02 A |  | 100% |  |  | start no earlier than 2007-01-23 | Kunal [10%] | 7.2h | 7.2h |
| 8 | 1.2.3 | Attend caBIG Conference | milestone | 0d? | 2007-02-05 A | 2007-02-07 A | 7 | 100% |  |  | start no earlier than 2007-02-05 | Kunal [42.1%]; Vijay [42.1%]; Charles [42.1%]; Steve [42.1%] | 96h | 96h |
| 9 | 1.3 | **Eloboration** |  | 150d? | 2007-01-16 A | 2007-08-16 |  | 39% | 91.51d? | 0d |  |  | 1906.8h | 857.44h |
| 10 | 1.3.1 | **Requiements Gathering** |  | 6.25d | 2007-01-19 A | 2007-01-29 |  | 91% | 0.57d | 134.75d |  |  | 22h | 20h |
| 11 | 1.3.1.1 | caCORE User's Meeting + Preperation |  | 1.25d | 2007-01-19 A | 2007-01-22 A |  | 100% |  |  | start no earlier than 2007-01-19 | Kunal | 10h | 10h |
| 12 | 1.3.1.2 | Requirements Meeting (BRN/caArray) |  | 0.25d | 2007-01-24 | 2007-01-24 |  |  |  | 125.75d | start no earlier than 2007-01-24 | Kunal | 2h |  |
| 13 | 1.3.1.3 | Requirements meeting (iSPY, Rembrandt, CGEMS) |  | 0.25d | 2007-01-25 A | 2007-01-25 A |  | 100% |  |  | start no earlier than 2007-01-25 | Kunal | 2h | 2h |
| 14 | 1.3.1.4 | Requirements meeting (caCORE, SDK) |  | 0.25d | 2007-01-25 A | 2007-01-25 A |  | 100% |  |  | start no earlier than 2007-01-25 | Kunal | 2h | 2h |
| 15 | 1.3.1.5 | Requirements meeting (SPORES, caMOD) |  | 0.25d | 2007-01-26 A | 2007-01-26 A |  | 100% |  |  | start no earlier than 2007-01-26 | Kunal | 2h | 2h |
| 16 | 1.3.1.6 | Requirements meeting (BMS) |  | 0.25d | 2007-01-26 A | 2007-01-26 A |  | 100% |  |  | start no earlier than 2007-01-26 | Kunal | 2h | 2h |
| 17 | 1.3.1.7 | Requirements meeting (caGRID) |  | 0.25d | 2007-01-29 A | 2007-01-29 A |  | 100% |  |  | start no earlier than 2007-01-29 | Kunal | 2h | 2h |
| 18 | 1.3.2 | **Scope Document** |  | 8d | 2007-01-26 A | 2007-02-09 A |  | 100% |  |  |  |  | 96h | 96h |
| 19 | 1.3.2.1 | Prepare list of scope items on gforge |  | 1d | 2007-01-26 A | 2007-01-26 A |  | 100% |  |  | start no earlier than 2007-01-26 | Kunal | 8h | 8h |
| 20 | 1.3.2.2 | Draft scope document |  | 3d | 2007-01-29 A | 2007-01-31 A | 19 | 100% |  |  |  | Charles | 24h | 24h |
| 21 | 1.3.2.3 | Estimate LOE for Itertion 1 & 2 scope items |  | 1d | 2007-02-01 A | 2007-02-01 A | 20 | 100% |  |  |  | Kunal | 8h | 8h |
| 22 | 1.3.2.4 | Prepare risk list |  | 1d | 2007-02-02 A | 2007-02-02 A | 21 | 100% |  |  |  | Charles; Kunal | 16h | 16h |
| 23 | 1.3.2.5 | NCICB Review of scope document |  | 2d | 2007-02-01 A | 2007-02-05 A | 20 | 100% |  |  |  | Avinash [150%] | 24h | 24h |
| 24 | 1.3.2.6 | Revise scope document |  | 2d | 2007-02-08 A | 2007-02-09 A | 23, 8 | 100% |  |  |  | Kunal | 16h | 16h |
| 25 | 1.3.2.7 | Finalize Scope | milestone | 0d | 2007-02-09 A | 2007-02-09 A | 24 | 100% |  |  |  | Kunal; Charles |  |  |
| 26 | 1.3.5 | Revise task plan |  | 1d? | 2007-01-23 A | 2007-01-23 A |  | 100% |  |  |  | Charles | 8h | 8h |

| ID | WBS | Task | Duration | Start | Finish | Predecessors | Complete | Remaining | Total slack | Constraint | Resources | Work | Actual work |
| --- | --- | --- | --- | --- | --- | --- | --- | --- | --- | --- | --- | --- | --- |
| 27 | 1.3.6 | **Construction** | 150d | 2007-01-16 A | 2007-08-16 |  | 40% | 90.47d | 0d |  |  | 1380.8h | 733.44h |
| 28 | 1.3.6.1 | **Iteration 1** | 48d | 2007-01-16 A | 2007-03-27 |  | 98% | 0.84d | 102d |  |  | 504.8h | 480.8h |
| 29 | 1.3.6.1.1 | CSM Application Developers Guide Update | 5d | 2007-01-16 A | 2007-01-22 A |  | 100% |  |  | start no earlier than 2007-01-16 | Vijay | 40h | 40h |
| 30 | 1.3.6.1.2 | Regression Junit Development | 8d | 2007-01-23 A | 2007-02-01 A | 29 | 100% |  |  |  | Vijay | 64h | 64h |
| 31 | 1.3.4.1.3 | CSM Bug Fixes (GF#3794) | 6d | 2007-02-02 A | 2007-02-14 A | 30 | 100% |  |  |  | Vijay | 48h | 48h |
| 32 | 1.3.4.1.4 | **CSM caGRID Integration** | 20d | 2007-02-14 A | 2007-03-13 A |  | 100% |  |  |  |  | 196h | 196h |
| 33 | 1.3.4.1.4.1 | **Client Session is singleton which is enforcing the CSM caGrid Integration project to use snychornization** | 13d | 2007-02-14 A | 2007-03-02 A |  | 100% |  |  |  |  | 40h | 40h |
| 34 | 1.3.4.1.4.1.1 | Design | 4d | 2007-02-14 A | 2007-02-19 A |  | 100% |  |  | start no earlier than 2007-02-14 | Kunal [50%] | 16h | 16h |
| 35 | 1.3.4.1.4.1.2 | Development | 3d | 2007-02-28 A | 2007-03-02 A | 40 | 100% |  |  |  | Kunal | 24h | 24h |
| 36 | 1.3.4.1.4.2 | **Upgrade the CSM/caGRID integration to use new functionality of CSM 3.2** | 10d | 2007-02-14 A | 2007-02-27 A |  | 100% |  |  |  |  | 76h | 76h |
| 37 | 1.3.4.1.4.2.1 | Design | 4d | 2007-02-14 A | 2007-02-19 A |  | 100% |  |  | start no earlier than 2007-02-14 | Kuanl [50%] | 16h | 16h |
| 38 | 1.3.4.1.4.2.2 | Design Review | 0.5d | 2007-02-20 A | 2007-02-20 A | 37 | 100% |  |  |  | caGRID; Satish; Avinash; Kunal | 16h | 16h |
| 39 | 1.3.4.1.4.2.3 | Design update | 0.5d | 2007-02-20 A | 2007-02-20 A | 38 | 100% |  |  |  | Kunal | 4h | 4h |
| 40 | 1.3.4.1.4.2.4 | Development | 5d | 2007-02-21 A | 2007-02-27 A | 39 | 100% |  |  |  | Kunal | 40h | 40h |
| 41 | 1.3.4.1.4.3 | **Seemless Security Integration** | 10d | 2007-02-28 A | 2007-03-13 A |  | 100% |  |  |  |  | 80h | 80h |
| 42 | 1.3.4.1.4.3.1 | Design | 2d | 2007-02-28 A | 2007-03-01 A | 40 | 100% |  |  |  | Kunal | 16h | 16h |
| 43 | 1.3.4.1.4.3.2 | **Development** | 6d | 2007-03-02 A | 2007-03-09 A |  | 100% |  |  |  |  | 48h | 48h |
| 44 | 1.3.4.1.4.3.2.1 | **Integration of new Installation Process into SDK** | 3d | 2007-03-02 A | 2007-03-06 A |  | 100% |  |  |  |  | 24h | 24h |
| 45 | 1.3.4.1.4.3.2.1.1 | Code | 3d | 2007-03-02 A | 2007-03-06 A |  | 100% |  |  | start no earlier than 2007-03-02 | Kunal | 24h | 24h |
| 46 | 1.3.4.1.4.3.2.2 | **Upgrade to CSM to Support Grid ability to leverage new CSM installation steps** | 3d | 2007-03-07 A | 2007-03-09 A |  | 100% |  |  |  |  | 24h | 24h |
| 47 | 1.3.4.1.4.3.2.2.1 | Code | 3d | 2007-03-07 A | 2007-03-09 A | 38 | 100% |  |  | start no earlier than 2007-03-07 | Kunal | 24h | 24h |
| 48 | 1.3.4.1.4.3.3 | **Documentation** | 2d | 2007-03-12 A | 2007-03-13 A |  | 100% |  |  |  |  | 16h | 16h |
| 49 | 1.3.4.1.4.3.3.1 | SDK Programmer's/Technical Guide | 2d | 2007-03-12 A | 2007-03-13 A | 46 | 100% |  |  |  | Kunal/Satish | 16h | 16h |
| 50 | 1.3.4.1.5 | **QA** | 9d | 2007-03-14 A | 2007-03-26 A |  | 100% |  |  |  | Kunal | 132.8h | 132.8h |
| 51 | 1.3.4.1.5.1 | Test Execution (In Sync With SDK Testing) | 5d | 2007-03-14 A | 2007-03-20 A |  | 100% |  |  | start no earlier than 2007-03-14 | QA | 40h | 40h |
| 52 | 1.3.4.1.5.2 | Test Support | 3d | 2007-03-14 A | 2007-03-16 A |  | 100% |  |  | start no earlier than 2007-03-14 | Kunal [20%] | 4.8h | 4.8h |
| 53 | 1.3.4.1.5.3 | Test Support | 2d | 2007-03-23 A | 2007-03-26 A |  | 100% |  |  | start no earlier than 2007-03-23 | Vijay | 16h | 16h |

| ID | WBS | Task | Type | Duration | Start | Finish | Predecessors | Complete | Remaining | Total slack | Free slack | Constraint | Resources | Work | Actual work |
| --- | --- | --- | --- | --- | --- | --- | --- | --- | --- | --- | --- | --- | --- | --- | --- |
| 54 | 1.3.4.1.6 | **Iteration Plan** |  | 1d | 2007-03-27 | 2007-03-27 |  |  |  | 102d |  |  |  | 24h |  |
| 55 | 1.3.4.1.6.1 | Review Client Feature Request/Revise Task Plan |  | 1d | 2007-03-27 | 2007-03-27 | 50 |  |  | 102d |  |  | Charles; Avinash; Satish | 24h |  |
| 56 | 1.3.4.2 | **Iteration 2** |  | 61d | 2007-02-15 A | 2007-05-10 |  | 35% | 39.84d | 70d |  |  |  | 852h | 252.64h |
| 57 | 1.3.4.2.1 | **Release 4.0 Beta 1** |  | 61d | 2007-02-15 A | 2007-05-10 |  | 35% | 39.84d | 70d |  |  |  | 852h | 252.64h |
| 58 | 1.3.4.2.1.1 | Update Requirements Document |  | 5d | 2007-03-07 A | 2007-03-13 A | 55 | 100% |  |  |  |  | Charles [10%] | 4h | 4h |
| 59 | 1.3.4.2.1.2 | **Instance Level Security** |  | 28d | 2007-03-19 A | 2007-04-25 |  | 15% | 23.8d | 0d |  |  |  | 224h | 33.6h |
| 60 | 1.3.4.2.1.2.1 | Design |  | 10d | 2007-03-19 A | 2007-03-30 | 52 | 42% | 5.8d | 0d |  | finish no earlier than 2007-03-30 | Kunal | 80h | 33.6h |
| 61 | 1.3.4.2.1.2.2 | Development |  | 18d | 2007-04-02 | 2007-04-25 | 60 |  |  | 0d |  |  | Kunal | 144h |  |
| 62 | 1.3.4.2.1.3 | Assist BMS to Upgrade to CSM 3.2 to come on the same version to intiate co development |  | 3d | 2007-04-26 | 2007-04-30 | 59 |  |  | 78d |  |  | Kunal | 24h |  |
| 63 | 1.3.4.2.1.4 | Query optimization and corrections to queries |  | 6d | 2007-02-15 A | 2007-02-22 A | 31 | 100% |  |  |  |  | Vijay | 48h | 48h |
| 64 | 1.3.4.2.1.5 | Support Digital Certificates as credentials |  | 8d | 2007-02-23 A | 2007-03-06 | 63 | 95% | 0.4d | 117d |  |  | Vijay | 64h | 60.8h |
| 65 | 1.3.4.2.1.6 | 21CFR Part 11 Support |  | 5d | 2007-03-07 A | 2007-03-13 A | 64 | 100% |  |  |  |  | Vijay | 40h | 40h |
| 66 | 1.3.4.2.1.7 | AuthenticationManager to correctly use the user provided lockout parameters |  | 1d | 2007-03-14 A | 2007-03-14 | 65 | 95% | 0.05d | 110.85d | 0d |  | Vijay | 8h | 7.6h |
| 67 | 1.3.4.2.1.8 | UPT Fixes |  | 3d | 2007-03-15 A | 2007-03-19 | 66 | 95% | 0.15d | 108d |  |  | Vijay | 24h | 22.8h |
| 68 | 1.3.4.2.1.9 | **Merge User Provisioning Manager & Authorization Manager Interfaces** |  | 3d | 2007-03-20 A | 2007-03-22 A | 67 | 100% |  |  |  |  |  | 24h | 24h |
| 69 | 1.3.4.2.1.9.1 | Design Update |  | 0.5d | 2007-03-20 A | 2007-03-20 A |  | 100% |  |  |  |  | Vijay | 4h | 4h |
| 70 | 1.3.4.2.1.9.2 | Code |  | 2.5d | 2007-03-20 A | 2007-03-22 A | 69 | 100% |  |  |  |  | Vijay | 20h | 20h |
| 71 | 1.3.4.2.1.10 | ANT Driven Installation for CSM and UPT |  | 3d | 2007-03-27 | 2007-03-29 | 53 |  |  | 13d | 0d |  | Vijay | 24h |  |
| 72 | 1.3.4.2.1.11 | Support Postgres Database |  | 4d | 2007-03-30 | 2007-04-04 | 71 |  |  | 13d | 0d |  | Vijay | 32h |  |
| 73 | 1.3.4.2.1.12 | Merge 3.2.1 Code into 4.0 Head |  | 2d | 2007-04-05 | 2007-04-06 | 72 |  |  | 13d | 0d |  | Vijay | 16h |  |
| 74 | 1.3.4.2.1.13 | **QA** |  | 41d | 2007-03-14 | 2007-05-09 |  |  |  | 0d |  |  |  | 280h |  |
| 75 | 1.3.4.2.1.13.1 | Requirements Analysis |  | 5d | 2007-03-14 | 2007-03-20 | 58 |  |  | 26d | 8d |  | QA | 40h |  |
| 76 | 1.3.4.2.1.13.2 | Test Plan Development |  | 10d | 2007-04-02 | 2007-04-13 | 75, 60 |  |  | 18d |  |  | QA | 80h |  |
| 77 | 1.3.4.2.1.13.3 | Test Execution |  | 10d | 2007-04-26 | 2007-05-09 | 73, 59 |  |  | 0d |  |  | QA | 80h |  |
| 78 | 1.3.4.2.1.13.4 | Test Support |  | 5d | 2007-04-09 | 2007-04-13 | 73 |  |  | 17.48d | 0d |  | Vijay; Kunal | 80h |  |
| 79 | 1.3.4.2.1.14 | Release Packaging |  | 2d | 2007-04-16 A | 2007-04-17 | 78 | 74% | 0.52d | 16d |  |  | Vijay | 16h | 11.84h |
| 80 | 1.3.4.2.1.15 | Release 4.0 Beta 1 | milestone | 0d | 2007-05-09 | 2007-05-09 | 79, 74 |  |  | 0d |  |  |  |  |  |

| ID | WBS | Task | Type | Duration | Start | Finish | Predecessors | Total slack | Free slack | Constraint | Resources | Work |
| --- | --- | --- | --- | --- | --- | --- | --- | --- | --- | --- | --- | --- |
| 81 | 1.3.4.2.1.16 | **Iteration Plan** |  | 1d | 2007-05-10 | 2007-05-10 |  | 70d |  |  |  | 24h |
| 82 | 1.3.4.2.1.16.1 | Review Client Feature Request/Revise Task Plan |  | 1d | 2007-05-10 | 2007-05-10 | 80 | 70d |  |  | Charles; Avinash; Satish | 24h |
| 83 | 1.3.4.3 | **Iteration 3** |  | 26d | 2007-05-10 | 2007-06-14 |  | 0d |  |  |  | 24h |
| 84 | 1.3.4.3.1 | Release 4.0 Beta 2 |  | 25d | 2007-05-10 | 2007-06-13 | 80 | 0d |  |  |  |  |
| 85 | 1.3.4.3.2 | **Iteration Plan** |  | 1d | 2007-06-14 | 2007-06-14 |  | 0d |  |  |  | 24h |
| 86 | 1.3.4.3.2.1 | Review Client Feature Request/Revise Task Plan |  | 1d | 2007-06-14 | 2007-06-14 | 84 | 0d |  |  | Charles; Avinash; Satish | 24h |
| 87 | 1.3.4.4 | **Iteration 4** |  | 25d | 2007-06-15 | 2007-07-19 |  | 0d |  |  |  |  |
| 88 | 1.3.4.4.1 | Release 4.0 Beta 2 |  | 25d | 2007-06-15 | 2007-07-19 | 85 | 0d |  |  |  |  |
| 89 | 1.3.4.5 | Integration Test |  | 10d | 2007-07-20 | 2007-08-02 | 87 | 0d |  |  |  |  |
| 90 | 1.3.4.6 | UAT Test |  | 10d | 2007-08-03 | 2007-08-16 | 89 | 0d |  |  |  |  |
| 91 | 1.3.7 | **Transition** |  | 25d | 2007-06-19 | 2007-07-23 |  | 18d |  |  |  | 400h |
| 92 | 1.3.5.1 | **Documentation** |  | 25d | 2007-06-19 | 2007-07-23 |  | 18d | 0d |  |  | 400h |
| 93 | 1.3.7.1.1 | New technical guide |  | 10d | 2007-06-19 | 2007-07-02 |  | 18d | 0d | start no earlier than 2007-06-19 | Vijay; Kunal | 160h |
| 94 | 1.3.7.1 | New users guide |  | 10d | 2007-07-03 | 2007-07-16 | 93 | 18d | 0d |  | Vijay; Kunal | 160h |
| 95 | 1.3.7.1.2 | How to example |  | 5d | 2007-07-17 | 2007-07-23 | 94 | 18d |  |  | Vijay; Kunal | 80h |
| 96 | 1.3.7.1.3 | 4.0 Release Complete | milestone | 0d | 2007-07-23 | 2007-07-23 | 92 | 18d |  |  |  |  |
